# Saurabh_Shekhar_pisal_A20403781_Assignment_A

Schedule from MS Project, 2018-10-25 to 2019-01-30, A marks actual dates.

## Calendars

- Standard: Mon-Fri 08:00-12:00, 13:00-17:00; Sat-Sun off.

## Resources

| Resource | Group |
| --- | --- |
| Saurabh Shekhar Pisal | L2.5 Business Analyst |
| Bishwa Panigrahi | US-ChequeProcessing L2.5 |
| Sumit Bepari | VAS-Project Manager |
| Jagannath Mani | AS Team Application Development |
| Suraj Sinha | L3 Application Support |
| Nihar Swain | L2 Business Analyst |
| Shekhar Manohar | L3 Project Manager |
| Suchitra Pisal | HR Associate |
| <New Resource> |  |

## Schedule

| ID | WBS | Task | Type | Duration | Start | Finish | Predecessors | Complete | Remaining | Total slack | Free slack | Deadline | Resources | Work | Actual work |
| --- | --- | --- | --- | --- | --- | --- | --- | --- | --- | --- | --- | --- | --- | --- | --- |
| 1 | 1 | Project Initiation | milestone, manual | 0d | 2018-10-25 | 2018-10-25 |  |  |  |  |  |  | Sumit Bepari |  |  |
| 2 | 2 | **Project - Image Distrubution Manager** |  | 70d | 2018-10-25 A | 2019-01-30 |  | 10% | 63.14d |  |  |  |  | 680h | 40h |
| 3 | 2.1 | **Requirement Elicitation** |  | 29d | 2018-10-25 A | 2018-12-04 | 1 | 16% | 24.32d | 5d |  |  |  | 248h | 40h |
| 4 | 2.1.1 | Requirement Workshop with Stakeholders(End-users, SME both client side and IT side,Business users,IT representatives)) |  | 2d | 2018-10-25 A | 2018-10-26 A |  | 100% |  |  |  |  | Saurabh Shekhar Pisal | 16h | 16h |
| 5 | 2.1.2 | Report Formation - Documentation of Requiremnt workshop |  | 1d | 2018-10-29 A | 2018-10-29 A | 4 | 100% |  |  |  |  | Saurabh Shekhar Pisal | 8h | 8h |
| 6 | 2.1.3 | One on one Interviewing with Application Users for exploring issues |  | 2d | 2018-10-25 A | 2018-10-26 A |  | 100% |  |  |  |  | Nihar Swain | 16h | 16h |
| 7 | 2.1.4 | Job shadowing with Application Users |  | 7d | 2018-10-30 | 2018-11-07 | 6SS+3d |  |  | 5d | 0d |  | Nihar Swain | 56h |  |
| 8 | 2.1.5 | Week walkthrough of application usage |  | 7d | 2018-11-08 | 2018-11-16 | 7 |  |  | 5d | 0d |  | Saurabh Shekhar Pisal | 56h |  |
| 9 | 2.1.6 | Reconciliation of Requirements collected |  | 2d | 2018-11-19 | 2018-11-20 | 5, 8, 6 |  |  | 5d | 0d |  | Nihar Swain | 16h |  |
| 10 | 2.1.7 | Project Manager Requirements Review |  | 10d | 2018-11-21 | 2018-12-04 | 9 |  |  | 5d | 0d |  | Sumit Bepari | 80h |  |
| 11 | 2.2 | Project Validation | milestone | 0d | 2018-12-04 | 2018-12-04 | 10 |  |  | 1d |  |  |  |  |  |
| 12 | 2.3 | **Project Design & UAT** |  | 20d | 2018-12-06 | 2019-01-02 | 11 |  |  |  |  |  |  | 432h |  |
| 13 | 2.3.1 | Development Team project Requiremnt validation |  | 1d | 2018-12-06 | 2018-12-06 |  |  |  | 4d | 0d |  | Jagannath Mani | 8h |  |
| 14 | 2.3.2 | Resource Skills and Recuritment |  | 2d | 2018-12-07 | 2018-12-10 | 13SS+1d |  |  | 4d |  | 2018-12-16 | Suchitra Pisal | 16h |  |
| 15 | 2.3.3 | Design Prototyping |  | 5d | 2018-12-10 | 2018-12-14 | 13SS+2d |  |  | 8d | 0d |  | Jagannath Mani; Suraj Sinha | 80h |  |
| 16 | 2.3.4 | UAT Testing of Prototype |  | 2d | 2018-12-17 | 2018-12-18 | 15 |  |  | 8d | 0d |  | Jagannath Mani; Shekhar Manohar; Sumit Bepari; Suraj Sinha | 64h |  |
| 17 | 2.3.5 | UAT Results | milestone | 0d | 2018-12-18 | 2018-12-18 | 16 |  |  | 8d | 0d |  |  |  |  |
| 18 | 2.3.6 | Reitteration of the application changes after User Reviews |  | 5d | 2018-12-19 | 2018-12-25 | 17 |  |  | 8d | 0d |  | Saurabh Shekhar Pisal; Shekhar Manohar; Sumit Bepari | 120h |  |
| 19 | 2.3.7 | Review of Application Improvements |  | 2d | 2018-12-26 | 2018-12-27 | 18 |  |  | 8d | 0d |  | Jagannath Mani; Sumit Bepari; Shekhar Manohar | 48h |  |
| 20 | 2.3.8 | Design Change and Final Prototype implementation and testing |  | 3d | 2018-12-28 | 2019-01-01 | 19 |  |  | 8d | 0d |  | Jagannath Mani; Shekhar Manohar; Sumit Bepari; Suraj Sinha | 96h |  |
| 21 | 2.3.9 | New IDM application with Required Changed Ready for Deployment | milestone | 0d | 2019-01-01 | 2019-01-01 | 20 |  |  | 8d | 2d |  | Bishwa Panigrahi; Jagannath Mani; Nihar Swain; Shekhar Manohar; Sumit Bepari; Suraj Sinha |  |  |
| 22 | 3 | **Control M Integration** |  | 10d | 2019-01-04 | 2019-01-17 | 21 |  |  |  |  |  |  | 200h |  |
| 23 | 3.1 | Recover All Schedules for BP |  | 2d | 2019-01-04 | 2019-01-07 |  |  |  | 6d | 0d |  | Saurabh Shekhar Pisal | 16h |  |
| 24 | 3.2 | Verify Schedules from Windows servers are turned off before implementation on Sat & Sunday |  | 1d | 2019-01-08 | 2019-01-08 | 23 |  |  | 6d | 0d |  | Bishwa Panigrahi; Nihar Swain | 16h |  |
| 25 | 3.3 | Develop XML files for Control m to create schedules |  | 3d | 2019-01-08 | 2019-01-10 | 24SS |  |  | 6d | 0d |  | Jagannath Mani | 24h |  |
| 26 | 3.4 | Validating SSH certificates for Service oriented architecture to implement successfully |  | 1d | 2019-01-09 | 2019-01-09 | 25SS+1d |  |  | 6d | 0d |  | Bishwa Panigrahi; Nihar Swain | 16h |  |
| 27 | 3.5 | Change finilization and Report approval for Change implementation |  | 2d | 2019-01-10 | 2019-01-11 | 26 |  |  | 6d | 0d |  | Shekhar Manohar; Sumit Bepari | 32h |  |
| 28 | 3.6 | Control M implementation on Production | manual | 1d | 2019-01-12 | 2019-01-12 | 27 |  |  |  |  |  | Bishwa Panigrahi; Jagannath Mani; Nihar Swain; Shekhar Manohar; Sumit Bepari; Suraj Sinha | 48h |  |
| 29 | 3.7 | Production Testing of control M and Revert if Fails | manual | 1d | 2019-01-13 | 2019-01-13 | 28 |  |  |  |  |  | Bishwa Panigrahi; Jagannath Mani; Nihar Swain; Shekhar Manohar; Sumit Bepari; Suraj Sinha | 48h |  |
| 30 | 3.8 | Production Testing Succcessfull on Business day | milestone | 0d | 2019-01-13 | 2019-01-13 | 29 |  |  | 8d | 0d |  | Bishwa Panigrahi; Nihar Swain; Sumit Bepari; Suraj Sinha |  |  |

Notes:
- 10: The project manager will review the requirements check for Technical Requirements and Presense of Technical experties for the implementation of new Project Improvements / New Application Development
- 12: Reitterative waterfall model will be used here for the application Development
- 14: Will check for internal team resource skill sets required for the development and recruit for the same
- 22: This will be used mainly as a Scheduler and a monitoring tool for the business application processes.
- 23: Recover All Schedules required for the business process from AS Team
- 24: Create an Change ticket for Tracking this change and take approvals from the stakeholders of the upstream and downstream applcations

| ID | WBS | Task | Type | Duration | Start | Finish | Predecessors | Total slack | Free slack | Resources | Work |
| --- | --- | --- | --- | --- | --- | --- | --- | --- | --- | --- | --- |
| 31 | 4 | **Monitoring of Live Environment for Issues** |  | 5d | 2019-01-14 | 2019-01-18 |  | 8d |  |  | 88h |
| 32 | 4.1 | IDM Issues reporting via INCs,CGM |  | 5d | 2019-01-14 | 2019-01-18 | 30 | 8d | 0d | Bishwa Panigrahi; Nihar Swain | 80h |
| 33 | 4.2 | Report generation on Issues for L3 feeds |  | 1d | 2019-01-18 | 2019-01-18 | 32FF | 8d | 0d | Sumit Bepari | 8h |
| 34 | 5 | L3,L2,AS team final sign off of successful IDM & Control M Implementation | milestone | 0d | 2019-01-18 | 2019-01-18 | 33 | 8d |  | Jagannath Mani; Saurabh Shekhar Pisal; Sumit Bepari; Suraj Sinha |  |
